# 项目管理系统

How a schedule from MS Project changed from version to version. A marks actual dates.

## Version 1 (saved 2019-11-26, file 项目计划 4.1.mpp)

Note of the change: 备份文档

| ID | WBS | Task | Duration | Start | Finish | Predecessors | Complete | Total float |
| --- | --- | --- | --- | --- | --- | --- | --- | --- |
| 1 | 1 | **项目管理系统** | 63d | 2019-09-03 A | 2019-11-12 |  | 65% | 2d |
| 2 | 1.1 | **启动阶段** | 4d | 2019-09-03 A | 2019-09-07 A |  | 100% |  |
| 3 |  | 组建团队 | 1d | 2019-09-03 A | 2019-09-04 A |  | 100% |  |
| 4 |  | 选举项目经理 | 1d | 2019-09-03 A | 2019-09-04 A | 3FF | 100% |  |
| 5 |  | 确定项目主题 | 1d | 2019-09-04 A | 2019-09-05 A | 3 | 100% |  |
| 6 |  | 确定项目章程 | 1d | 2019-09-05 A | 2019-09-06 A | 5 | 100% |  |
| 7 |  | 启动项目 | 1d | 2019-09-06 A | 2019-09-07 A | 6 | 100% |  |
| 8 | 1.2 | **计划阶段** | 9d | 2019-09-07 A | 2019-09-16 A | 2 | 100% |  |
| 9 |  | 召开团队计划会议 | 1d | 2019-09-07 A | 2019-09-08 A |  | 100% |  |
| 10 |  | 准备范围说明书 | 2d | 2019-09-07 A | 2019-09-09 A |  | 100% |  |
| 11 |  | 准备WBS | 3d | 2019-09-07 A | 2019-09-10 A |  | 100% |  |
| 12 |  | 制定计划文档 | 2d | 2019-09-11 A | 2019-09-13 A | 11 | 100% |  |
| 13 |  | 评审计划文档 | 1d | 2019-09-13 A | 2019-09-14 A | 12 | 100% |  |
| 14 |  | 风险识别和讨论 | 2d | 2019-09-14 A | 2019-09-16 A | 13 | 100% |  |
| 15 |  | 项目正式确立 | 0d | 2019-09-16 A | 2019-09-16 A | 14 | 100% |  |
| 16 | 1.4 | **执行阶段** | 55d | 2019-09-07 A | 2019-11-08 | 2 | 64% | 2d |
| 17 | 1.4.1 | **前期学习** | 34d | 2019-09-07 A | 2019-10-18 |  | 91% | 14d |
| 18 |  | 项目管理知识学习 | 4d | 2019-09-07 A | 2019-09-11 A |  | 100% |  |
| 19 |  | Angular学习 | 14d | 2019-09-07 A | 2019-09-21 A |  | 100% |  |
| 20 |  | Django学习 | 14d | 2019-09-07 A | 2019-09-21 A |  | 100% |  |
| 21 |  | Channels学习 | 7d | 2019-10-11 A | 2019-10-18 |  | 50% | 14d |
| 22 | 1.4.2 | **需求分析** | 14d | 2019-09-16 A | 2019-09-30 A | 18, 15 | 100% |  |
| 23 |  | 功能性需求分析 | 3d | 2019-09-16 A | 2019-09-19 A |  | 100% |  |
| 24 |  | 非功能性需求分析 | 1d | 2019-09-16 A | 2019-09-17 A |  | 100% |  |
| 25 |  | 用例设计 | 5d | 2019-09-19 A | 2019-09-24 A | 23 | 100% |  |
| 26 | 1.4.2.4 | **前端原型设计** | 6d | 2019-09-24 A | 2019-09-30 A |  | 100% |  |
| 27 |  | 登陆页面原型设计 | 1d | 2019-09-24 A | 2019-09-25 A | 25 | 100% |  |
| 28 |  | 主页面原型设计 | 1d | 2019-09-25 A | 2019-09-26 A | 27 | 100% |  |
| 29 |  | 个人页原型设计 | 2d | 2019-09-24 A | 2019-09-26 A | 25 | 100% |  |
| 30 |  | 项目页原型设计 | 4d | 2019-09-26 A | 2019-09-30 A | 28 | 100% |  |
| 31 |  | 聊天页原型设计 | 2d | 2019-09-26 A | 2019-09-28 A | 29 | 100% |  |
| 32 |  | 好友页原型设计 | 3d | 2019-09-25 A | 2019-09-28 A | 25 | 100% |  |
| 33 |  | 通知页原型设计 | 1d | 2019-09-28 A | 2019-09-29 A | 32, 31 | 100% |  |
| 34 |  | 编写需求文档 | 3d | 2019-09-24 A | 2019-09-27 A | 25 | 100% |  |
| 35 |  | 需求评审 | 1d | 2019-09-30 A | 2019-10-01 A | 22 | 100% |  |
| 36 | 1.4.4 | **概要设计** | 9d | 2019-10-08 A | 2019-10-17 A | 35 | 100% |  |
| 37 |  | 系统架构设计 | 3d | 2019-10-08 A | 2019-10-11 A |  | 100% |  |
| 38 |  | 后台模块设计 | 2d | 2019-10-08 A | 2019-10-10 A |  | 100% |  |
| 39 |  | 数据模型设计 | 3d | 2019-10-10 A | 2019-10-13 A | 38 | 100% |  |
| 40 |  | 数据库设计 | 4d | 2019-10-13 A | 2019-10-17 A | 39 | 100% |  |
| 41 |  | 概要设计评审 | 1d | 2019-10-17 A | 2019-10-18 A | 40 | 100% |  |
| 42 | 1.4.6 | **详细设计** | 19d | 2019-10-08 A | 2019-10-27 |  | 88% | 14d |
| 43 | 1.4.6.1 | **前后端接口设计** | 8d | 2019-10-08 A | 2019-10-16 |  | 59% | 25d |
| 44 |  | 用户模块接口 | 2d | 2019-10-08 A | 2019-10-10 A | 35 | 100% |  |
| 45 |  | 项目模块接口 | 2d | 2019-10-10 A | 2019-10-12 A | 44 | 100% |  |
| 46 |  | 任务模块接口 | 2d | 2019-10-12 A | 2019-10-14 A | 45 | 100% |  |
| 47 |  | 聊天模块接口 | 3d | 2019-10-08 | 2019-10-11 | 35 |  | 3.5d |
| 48 |  | 接口评审 | 2d | 2019-10-14 A | 2019-10-16 | 46, 47 | 25% | 25d |
| 49 | 1.4.6.2 | **对象模型设计** | 2d | 2019-10-17 A | 2019-10-19 A |  | 100% |  |
| 50 |  | 前端对象模型 | 1d | 2019-10-17 A | 2019-10-18 A | 48SS+3d | 100% |  |
| 51 |  | 后台对象模型 | 2d | 2019-10-17 A | 2019-10-19 A | 48SS+3d | 100% |  |
| 52 | 1.4.6.3 | **用例实现设计** | 7d | 2019-10-19 A | 2019-10-26 A |  | 100% |  |
| 53 | 1.4.6.3.1 | **用户模块用例实现** | 4d | 2019-10-19 A | 2019-10-23 A |  | 100% |  |
| 54 |  | 用例 1 2 3（前端） | 2d | 2019-10-19 A | 2019-10-21 A | 50, 51 | 100% |  |
| 55 |  | 用例 4 5（前端） | 1d | 2019-10-19 A | 2019-10-20 A | 50, 51 | 100% |  |
| 56 |  | 用例 1~5（后端） | 2d | 2019-10-21 A | 2019-10-23 A | 54, 55, 58 | 100% |  |
| 57 |  | 用例 6 7（前端） | 1d | 2019-10-19 A | 2019-10-20 A | 50, 51 | 100% |  |
| 58 |  | 用例 6 7（后端） | 1d | 2019-10-20 A | 2019-10-21 A | 57 | 100% |  |
| 59 | 1.4.6.3.2 | **项目模块用例实现** | 4d | 2019-10-19 A | 2019-10-23 A |  | 100% |  |
| 60 |  | 用例 1~6 9 | 1d | 2019-10-19 A | 2019-10-20 A | 50, 51 | 100% |  |
| 61 |  | 用例 7 8 10（后端） | 1d | 2019-10-20 A | 2019-10-21 A | 60 | 100% |  |
| 62 |  | 用例 7 8 10（前端） | 2d | 2019-10-21 A | 2019-10-23 A | 61 | 100% |  |
| 63 | 1.4.6.3.3 | **任务模块用例实现** | 6d | 2019-10-19 A | 2019-10-25 A |  | 100% |  |
| 64 |  | 用例 1~6 | 6d | 2019-10-19 A | 2019-10-25 A | 50, 51 | 100% |  |
| 65 |  | 用例 7 8 | 1d | 2019-10-21 A | 2019-10-22 A | 61 | 100% |  |
| 66 | 1.4.6.3.4 | **聊天模块用例实现** | 3d | 2019-10-19 A | 2019-10-22 A |  | 100% |  |
| 67 |  | 用例 1~3（后端） | 2d | 2019-10-19 A | 2019-10-21 A | 50, 51 | 100% |  |
| 68 |  | 用例 1~3（前端） | 1d | 2019-10-21 A | 2019-10-22 A | 55, 67 | 100% |  |
| 69 |  | 用例实现评审 | 1d | 2019-10-25 A | 2019-10-26 A | 53, 59, 63, 66 | 100% |  |
| 70 |  | 编写详细设计文档 | 1d | 2019-10-26 A | 2019-10-27 A | 69 | 100% |  |

| ID | WBS | Task | Duration | Start | Finish | Predecessors | Complete | Total float | Constraint |
| --- | --- | --- | --- | --- | --- | --- | --- | --- | --- |
| 71 |  | 详细设计评审 | 1d | 2019-10-27 A | 2019-10-28 A | 70 | 100% |  |  |
| 72 |  | 完成系统设计 | 0d | 2019-10-28 | 2019-10-28 | 71 |  | 13d |  |
| 73 | 1.4.9 | **编码开发** | 24d | 2019-10-12 A | 2019-11-05 |  | 41% | 5d |  |
| 74 | 1.4.9.1 | **前端开发** | 21d | 2019-10-12 A | 2019-11-02 |  | 49% | 8d |  |
| 75 | 1.4.9.1.1 | **前端组件开发** | 18d | 2019-10-12 A | 2019-10-30 |  | 84% | 11d |  |
| 76 |  | 登陆界面组件 | 1d | 2019-10-12 A | 2019-10-13 A |  | 100% |  |  |
| 77 |  | 个人界面组件 | 1d | 2019-10-12 A | 2019-10-13 A |  | 100% |  |  |
| 78 |  | 好友界面组件 | 4d | 2019-10-12 A | 2019-10-16 A |  | 100% |  |  |
| 79 | 1.4.9.1.1.4 | **项目界面组件** | 8d | 2019-10-22 A | 2019-10-30 | 65 | 69% | 11d |  |
| 80 |  | 项目详情 | 1d | 2019-10-22 A | 2019-10-23 A | 65 | 100% |  |  |
| 81 |  | 修改项目 | 1d | 2019-10-23 A | 2019-10-24 A | 80 | 100% |  |  |
| 82 |  | 成员视图 | 2d | 2019-10-24 A | 2019-10-26 A | 81 | 100% |  |  |
| 83 |  | 任务视图 | 2d | 2019-10-26 A | 2019-10-28 | 82 | 75% | 11d |  |
| 84 |  | 时间视图 | 2d | 2019-10-28 | 2019-10-30 | 83 |  | 11d |  |
| 85 |  | 通知界面组件 | 3d | 2019-10-16 A | 2019-10-19 | 78 | 75% | 22d |  |
| 86 |  | 聊天界面组件 | 3d | 2019-10-13 A | 2019-10-16 A | 77 | 100% |  |  |
| 87 | 1.4.9.1.2 | **前端逻辑开发** | 9d | 2019-10-22 A | 2019-10-31 |  | 21% | 2d |  |
| 88 |  | 登录界面逻辑 | 1d | 2019-10-23 A | 2019-10-24 | 53 | 50% | 1d |  |
| 89 |  | 个人界面逻辑 | 2d | 2019-10-23 A | 2019-10-25 | 53 | 38% | 8d |  |
| 90 |  | 好友界面逻辑 | 3d | 2019-10-23 A | 2019-10-26 | 53 | 17% | 0.75d |  |
| 91 | 1.4.9.1.2.4 | **项目界面逻辑** | 6d | 2019-10-25 A | 2019-10-31 | 63, 88, 59 | 7% | 2d |  |
| 92 |  | 项目详情 | 1d | 2019-10-25 A | 2019-10-26 | 63, 88, 59 | 50% | 7d |  |
| 93 |  | 修改项目 | 1d | 2019-10-25 | 2019-10-26 | 92SS |  | 2d |  |
| 94 |  | 成员视图 | 2d | 2019-10-26 | 2019-10-28 | 93 |  | 2d |  |
| 95 |  | 任务视图 | 2d | 2019-10-28 | 2019-10-30 | 94 |  | 2d |  |
| 96 |  | 时间视图 | 1d | 2019-10-30 | 2019-10-31 | 95 |  | 2d |  |
| 97 |  | 通知界面逻辑 | 3d | 2019-10-26 A | 2019-10-29 | 59, 90 | 25% | 4d |  |
| 98 |  | 聊天界面逻辑 | 3d | 2019-10-22 A | 2019-10-25 | 66 | 33% | 8d |  |
| 99 | 1.4.9.1.3 | **前端页面开发** | 9d | 2019-10-24 | 2019-11-02 |  |  | 2d |  |
| 100 |  | 登录页面 | 1d | 2019-10-24 | 2019-10-25 | 88 |  | 9.5d |  |
| 101 |  | 主页面 | 2d | 2019-10-31 | 2019-11-02 | 89, 90, 91, 97, 98 |  | 2d |  |
| 102 |  | 前端单元测试 | 16d | 2019-10-19 | 2019-11-04 | 100FF+2d, 101FF+2d |  | 2d |  |
| 103 |  | 完成前端开发 | 0d | 2019-11-04 | 2019-11-04 | 102 |  | 6d |  |
| 104 | 1.4.9.4 | **后台开发** | 10d | 2019-10-19 A | 2019-10-29 |  | 75% | 12d |  |
| 105 |  | 后台模型开发 | 3d | 2019-10-19 A | 2019-10-22 | 51 | 75% | 2.5d |  |
| 106 | 1.4.9.4.2 | **后台逻辑开发** | 6d | 2019-10-22 A | 2019-10-28 |  | 72% | 13d |  |
| 107 |  | 用户模块逻辑 | 2d | 2019-10-23 A | 2019-10-25 | 105, 53 | 75% | 16d |  |
| 108 |  | 项目模块逻辑 | 2d | 2019-10-25 A | 2019-10-27 A | 107, 59 | 100% |  |  |
| 109 |  | 任务模块逻辑 | 3d | 2019-10-25 A | 2019-10-28 A | 107, 63 | 100% |  |  |
| 110 |  | 聊天模块逻辑 | 2d | 2019-10-22 | 2019-10-24 | 21, 105, 66 |  | 10d |  |
| 111 | 1.4.9.4.3 | **后台接口开发** | 5d | 2019-10-24 A | 2019-10-29 |  | 80% | 6d |  |
| 112 |  | 用户模块接口 | 1d | 2019-10-25 A | 2019-10-26 A | 107 | 100% |  |  |
| 113 |  | 项目模块接口 | 2d | 2019-10-27 A | 2019-10-29 A | 108 | 100% |  |  |
| 114 |  | 任务模块接口 | 1d | 2019-10-28 A | 2019-10-29 A | 109 | 100% |  |  |
| 115 |  | 聊天模块接口 | 1d | 2019-10-24 | 2019-10-25 | 110 |  | 10d |  |
| 116 |  | 后台单元测试 | 5d | 2019-10-26 | 2019-10-31 | 112FF+2d, 113FF+2d, 114FF+2d, 115FF+2d |  | 6d |  |
| 117 |  | 完成后台开发 | 0d | 2019-10-31 | 2019-10-31 | 116 |  | 10d |  |
| 118 |  | 前后端对接 | 1d | 2019-11-04 | 2019-11-05 | 102, 116 |  | 2d |  |
| 119 | 1.4.10 | **系统测试** | 3d | 2019-11-05 | 2019-11-08 |  |  | 2d |  |
| 120 |  | 黑盒测试 | 3d | 2019-11-05 | 2019-11-08 | 118 |  | 2d |  |
| 121 |  | 完成代码开发 | 0d | 2019-11-08 | 2019-11-08 | 120 |  | 2d |  |
| 122 | 1.4.12 | **监督控制阶段** | 36d | 2019-09-08 A | 2019-10-21 |  |  | 0d |  |
| 123 | 1.4.12.1 | **进度报告** | 36d | 2019-09-08 A | 2019-10-21 |  |  | 0d |  |
| 124 |  | 学习进度报告 1 | 1d | 2019-09-08 A | 2019-09-09 |  |  |  | start no earlier than 2019-09-08 |
| 125 |  | 学习进度报告 2 | 1d | 2019-09-12 A | 2019-09-13 |  |  |  | start no earlier than 2019-09-12 |
| 126 |  | 学习进度报告 3 | 1d | 2019-09-14 A | 2019-09-15 |  |  |  | start no earlier than 2019-09-14 |
| 127 |  | 学习进度报告 4 | 1d | 2019-09-19 A | 2019-09-20 |  |  |  | start no earlier than 2019-09-19 |
| 128 |  | 设计进度报告 1 | 1d | 2019-09-21 A | 2019-09-22 |  |  |  | start no earlier than 2019-09-21 |
| 129 |  | 设计进度报告 2 | 1d | 2019-09-24 A | 2019-09-25 |  |  |  | start no earlier than 2019-09-24 |
| 130 |  | 设计进度报告 3 | 1d | 2019-09-27 A | 2019-09-28 |  |  |  | start no earlier than 2019-09-27 |
| 131 |  | 开发进度报告 1 | 1d | 2019-09-30 A | 2019-10-01 |  |  |  | start no earlier than 2019-09-30 |
| 132 |  | 开发进度报告 2 | 1d | 2019-10-03 A | 2019-10-04 |  |  |  | start no earlier than 2019-10-03 |
| 133 |  | 开发进度报告 3 | 1d | 2019-10-05 A | 2019-10-06 |  |  |  | start no earlier than 2019-10-05 |
| 134 |  | 开发进度报告 4 | 1d | 2019-10-10 A | 2019-10-11 |  |  |  | start no earlier than 2019-10-10 |
| 135 |  | 开发进度报告 5 | 1d | 2019-10-14 A | 2019-10-15 |  |  |  | start no earlier than 2019-10-14 |
| 136 |  | 测试进度报告 1 | 1d | 2019-10-16 A | 2019-10-17 |  |  |  | start no earlier than 2019-10-16 |
| 137 |  | 测试进度报告 2 | 1d | 2019-10-18 A | 2019-10-19 |  |  |  | start no earlier than 2019-10-18 |
| 138 |  | 测试进度报告 3 | 1d | 2019-10-20 A | 2019-10-21 |  |  |  | start no earlier than 2019-10-20 |
| 139 | 1.4.12.2 | **例会** | 18d | 2019-09-09 A | 2019-09-27 |  |  | 0d |  |
| 140 |  | 需求分析会议 | 1d | 2019-09-09 A | 2019-09-10 |  |  |  | start no earlier than 2019-09-09 |

| ID | WBS | Task | Duration | Start | Finish | Predecessors | Total float | Constraint |
| --- | --- | --- | --- | --- | --- | --- | --- | --- |
| 141 |  | 数据模型设计会议 | 1d | 2019-09-15 A | 2019-09-16 |  |  | start no earlier than 2019-09-15 |
| 142 |  | 原型设计会议 | 1d | 2019-09-19 A | 2019-09-20 |  |  | start no earlier than 2019-09-19 |
| 143 |  | 组件设计会议 | 1d | 2019-09-22 A | 2019-09-23 |  |  | start no earlier than 2019-09-22 |
| 144 |  | 开发培训会议 | 1d | 2019-09-26 A | 2019-09-27 |  |  | start no earlier than 2019-09-26 |
| 145 | 1.5 | **收尾阶段** | 4d | 2019-11-08 | 2019-11-12 | 16 | 2d |  |
| 146 |  | 编写用户手册 | 4d | 2019-11-08 | 2019-11-12 |  | 2d |  |
| 147 |  | 准备交付资料 | 4d | 2019-11-08 | 2019-11-12 |  | 2d |  |
| 148 | 2 | **其他** | 51d | 2019-09-17 A | 2019-11-14 |  | 0d |  |
| 149 |  | 国庆放假 | 1d | 2019-10-01 A | 2019-10-07 |  |  | start no earlier than 2019-10-01 |
| 150 |  | 开题汇报 | 2d | 2019-09-17 A | 2019-09-19 |  |  |  |
| 151 |  | 阶段检查 | 2d | 2019-09-24 A | 2019-09-26 |  |  |  |
| 152 |  | 阶段检查 | 2d | 2019-10-08 A | 2019-10-10 |  |  |  |
| 153 |  | 阶段检查 | 2d | 2019-10-15 A | 2019-10-17 |  |  |  |
| 154 |  | 阶段检查 | 2d | 2019-10-22 A | 2019-10-24 |  |  |  |
| 155 |  | 阶段检查 | 2d | 2019-10-29 A | 2019-10-31 |  |  |  |
| 156 |  | 结题汇报 | 2d | 2019-11-05 A | 2019-11-07 |  |  |  |
| 157 |  | 结题汇报 | 2d | 2019-11-12 A | 2019-11-14 |  | 0d |  |

## Version 2 (saved 2019-11-27, file 项目计划 终止.mpp)

Note of the change: 备份文档

Last finish 2019-11-14 → 2019-11-26 (+12d). Complete tasks 64 → 69.

Added:

| ID | Task | Duration | Start | Finish | Predecessors | Constraint | Resources |
| --- | --- | --- | --- | --- | --- | --- | --- |
| 15 | 制定收尾计划 | 2d | 2019-11-13 | 2019-11-15 |  | start no earlier than 2019-11-13 | 利 |
| 136 | 开发终止 | 0d | 2019-10-28 | 2019-10-28 |  | start no earlier than 2019-10-28 |  |
| 139 | 编写结题报告 | 4d | 2019-11-21 A | 2019-11-25 A | 138SS+2d |  | 利; 张 |
| 140 | 编写测试报告 | 3d | 2019-11-22 A | 2019-11-25 A | 112 |  | 曾; 吴 |

Removed: 99 前端页面开发; 100 登录页面; 101 主页面; 102 前端单元测试; 103 完成前端开发; 117 完成后台开发; 118 前后端对接; 119 系统测试; 120 黑盒测试; 121 完成代码开发

Changed:

| ID | Task | Start | Finish | Duration | Complete | Total float | Predecessors | Other |
| --- | --- | --- | --- | --- | --- | --- | --- | --- |
| 1 | **项目管理系统** |  | 2019-11-12 → 2019-11-26 (+14d) | 63d → 77d | 65% → 77% | 2d → 0d |  |  |
| 8 | **计划阶段** |  | 2019-09-16 A → 2019-11-15 (+60d) | 9d → 62d | 100% → 85% | none → 11d |  |  |
| 17 | **执行阶段** |  | 2019-11-08 → 2019-11-22 (+14d) | 55d → 69d | 64% → 75% | 2d → 4d |  |  |
| 74 | **编码开发** |  | 2019-11-05 → 2019-11-22 (+17d) | 24d → 41d | 41% → 64% | 5d → 4d |  |  |
| 75 | **前端开发** |  | 2019-11-02 → 2019-10-31 (-2d) | 21d → 19d | 49% → 53% | 8d → 26d |  |  |
| 100 | **后台开发** |  | 2019-10-29 → 2019-11-22 (+24d) | 10d → 34d | 75% → 82% | 12d → 4d |  |  |
| 112 | 后台单元测试 | 2019-10-26 → 2019-11-15 A (+20d) | 2019-10-31 → 2019-11-22 A (+22d) | 5d → 7d | 0% → 100% | 6d → none | 108FF+2d, 109FF+2d, 110FF+2d, 111FF+2d → 15, 107 | resources 吴; 曾 → 曾; 吴 |
| 113 | **监督控制阶段** |  | 2019-10-21 → 2019-10-28 (+7d) | 36d → 43d |  | 0d → 29d |  |  |
| 137 | **收尾阶段** | 2019-11-08 → 2019-11-19 A (+11d) | 2019-11-12 → 2019-11-26 A (+14d) | 4d → 7d | 0% → 100% | 2d → none | 17 → 15 |  |
| 138 | 编写用户手册 | 2019-11-08 → 2019-11-19 A (+11d) | 2019-11-12 → 2019-11-23 A (+11d) |  | 0% → 100% | 2d → none | none → 15FS+4d | resources 利; 李 → 李; 邹 |
| 141 | 整理交付资料 | 2019-11-08 → 2019-11-25 A (+17d) | 2019-11-12 → 2019-11-26 A (+14d) | 4d → 1d | 0% → 100% | 2d → none | none → 138, 139, 140 | was named 准备交付资料 |
